# Red River - Refuel Outage

Schedule from Primavera P6, 2011-03-01 to 2011-08-27, data date 2011-04-30, costs in USD, A marks actual dates.

## Calendars

- 7x24: Mon-Sun 01:00-12:00, 13:00-00:00. Exceptions (off unless hours are given): 2011-05-30, 2011-07-04.
- 5x10: Mon-Fri 07:00-12:00, 13:00-18:00; Sat-Sun off. Exceptions (off unless hours are given): 2011-05-30, 2011-07-04.
- 6x24: Mon-Sat 01:00-12:00, 13:00-00:00; Sun off. Exceptions (off unless hours are given): 2011-05-30, 2011-07-04.

## Resources

| Resource | Group | Rate |
| --- | --- | --- |
| Operations Test Group | labor | 80 |
| Laborer-Construction | labor | 35 |
| Finish Carpenter | labor | 67 |
| Ironworker | labor | 55 |
| Hydroblaster | labor | 90 |
| Inspections | labor | 85 |
| Operator | labor | 60 |
| Fire Suppression Subcontractor | labor | 85 |

## Schedule

| ID | Activity | Duration | Start | Finish | Predecessors | Complete | Remaining | Planned start | Planned finish | Total float | Free float | Constraint | Calendar | Resources | Cost | Actual cost | Responsibility | Phase |
| --- | --- | --- | --- | --- | --- | --- | --- | --- | --- | --- | --- | --- | --- | --- | --- | --- | --- | --- |
| A1010 | E-101 Build Scaffolding | 1.32d | 2011-03-01 A | 2011-03-03 A |  | 100% |  | 2011-03-01 | 2011-03-02 |  |  |  | 5x10 | Finish Carpenter [13.2 h] | 30,884.4 | 30,804 | HARIS | D |
| A1240 | E-102 Build Scaffolding | 1.32d | 2011-03-01 A | 2011-03-03 A |  | 100% |  | 2011-03-01 | 2011-03-02 |  |  |  | 5x10 | Finish Carpenter [13.2 h] | 30,884.4 | 31,005 | NOLAN | P |
| A1460 | E-103 Build Scaffolding | 1.32d | 2011-03-01 A | 2011-03-03 A |  | 100% |  | 2011-03-01 | 2011-03-02 |  |  |  | 5x10 | Finish Carpenter [13.2 h] | 884.4 | 1,005 | VENDR | P |
| A1680 | E-201 Build Scaffolding | 1.32d | 2011-03-01 A | 2011-03-02 A |  | 100% |  |  |  |  |  |  | 5x10 | Finish Carpenter [13.2 h] | 15,884.4 | 15,737 | NOLAN | P |
| A1890 | E-201 Build Scaffolding | 1.32d | 2011-03-01 A | 2011-03-02 A |  | 100% |  |  |  |  |  |  | 5x10 | Finish Carpenter [13.2 h] | 15,884.4 | 15,737 | NOLAN | P |
| A1020 | E-101 Install Blinds | 0.03d | 2011-03-02 A | 2011-03-02 A | A1010 | 100% |  |  |  |  |  | start on or after 2007-03-13 |  | Operations Test Group [0.55 h]; Laborer-Construction [0.55 h] | 63.25 | 63.25 | HARIS | D |
| A1230 | E-102 Install Blinds | 0.03d | 2011-03-02 A | 2011-03-02 A | A1240 | 100% |  |  |  |  |  |  |  | Operations Test Group [0.55 h]; Laborer-Construction [0.55 h] | 63.25 | 63.25 | NOLAN | D |
| A1450 | E-103 Install Blinds | 0.03d | 2011-03-02 A | 2011-03-02 A | A1460 | 100% |  |  |  |  |  |  |  | Operations Test Group [0.55 h]; Laborer-Construction [0.55 h] | 63.25 | 63.25 | NOLAN | D |
| A1670 | E-201 Install Blinds | 0.03d | 2011-03-02 A | 2011-03-02 A | A1680 | 100% |  |  |  |  |  |  |  | Operations Test Group [0.55 h]; Laborer-Construction [0.55 h] | 63.25 | 63.25 | NOLAN | D |
| A1880 | E-201 Install Blinds | 2.24d | 2011-03-02 A | 2011-03-05 A | A1890 | 100% |  | 2011-03-02 | 2011-03-04 |  |  |  |  | Laborer-Construction [49.23 h]; Fire Suppression Subcontractor [49.23 h] | 5,907 | 6,000 | NOLAN | D |
| A1030 | E-101 Remove Front Plate | 0.03d | 2011-03-02 A | 2011-03-02 A | A1020 | 100% |  |  |  |  |  | start on or after 2006-03-13 |  | Ironworker [0.21 h]; Laborer-Construction [0.21 h]; Operations Test Group [0.21 h] | 47.02 | 47.02 | HARIS | T |
| A1040 | E-101 Remove Bowl | 13.69d | 2011-03-02 A | 2011-03-15 A | A1030 | 100% |  | 2011-03-02 | 2011-03-16 |  |  |  |  | Ironworker [109.54 h] | 12,049.58 | 11,825 | HARIS | T |
| A1700 | E-201 Remove Bowl | 8.44d | 2011-03-02 A | 2011-03-11 A | A1690 | 100% |  | 2011-03-02 | 2011-03-10 |  |  |  |  | Ironworker [67.54 h] | 7,429.4 | 7,700 | NOLAN | T |
| A1690 | E-201 Remove Front Plate | 0.05d | 2011-03-03 A | 2011-03-03 A | A1670 | 100% |  | 2011-03-02 | 2011-03-02 |  |  |  |  | Ironworker [0.35 h]; Operations Test Group [0.35 h]; Ironworker [0.36 h] | 67.48 | 67.48 | NOLAN | T |
| A1710 | E-201 Remove Channel | 17.6d | 2011-03-10 A | 2011-03-28 A | A1700 | 100% |  |  |  |  |  |  |  | Ironworker [140.8 h] | 7,744 | 7,920 | NOLAN | T |
| A1050 | E-101 Remove Channel | 9.21d | 2011-03-15 A | 2011-03-24 A | A1040 | 100% |  | 2011-03-16 | 2011-03-25 |  |  |  |  | Ironworker [73.7 h] | 8,107 | 7,975 | MASON | T |
| A1060 | E-101 Remove Floating Head | 10.59d | 2011-03-25 A | 2011-04-06 A | A1050 | 100% |  | 2011-03-25 | 2011-04-04 |  |  |  |  | Ironworker [84.75 h] | 9,323.05 | 8,250 | FOLEY | T |
| A1730 | E-201 Inspect Bundle | 10.03d | 2011-03-28 A | 2011-04-08 A | A1710 | 100% |  | 2011-03-28 | 2011-04-07 |  |  |  | 6x24 | Inspections [80.26 h]; Ironworker [80.26 h] | 11,235.84 | 10,500 | NOLAN | T |
| A1900 | E-201 Remove Front Plate | 4.71d | 2011-03-28 A | 2011-04-04 A | A1880, A1710 | 100% |  | 2011-03-28 | 2011-04-02 |  |  |  |  | Ironworker [0.34 h]; Laborer-Construction [102.55 h]; Fire Suppression Subcontractor [102.55 h] | 12,324.45 | 13,198.17 | FOLEY | T |
| A1910 | E-201 Remove Bowl | 12.17d | 2011-04-01 A | 2011-04-16 A | A1900 | 100% |  | 2011-04-02 | 2011-04-15 |  |  |  |  | Ironworker [97.39 h] | 5,356.27 | 5,995 | FOLEY | T |
| A1070 | E-101 Pull Bundle | 5.49d | 2011-04-04 A | 2011-04-12 A | A1060 | 100% |  | 2011-04-05 | 2011-04-11 |  |  |  |  | Hydroblaster [120.8 h] | 10,871.85 | 12,060 | MASON | T |
| A1250 | E-102 Remove Front Plate | 0.05d | 2011-04-05 A | 2011-04-05 A | A1230, A1060 | 100% |  |  |  |  |  |  |  | Ironworker [0.36 h]; Laborer-Construction [0.36 h]; Operations Test Group [0.36 h] | 61.71 | 61.71 | NOLAN | T |
| A1260 | E-102 Remove Bowl | 9.03d | 2011-04-05 A | 2011-04-13 A | A1250 | 100% |  | 2011-04-05 | 2011-04-14 |  |  |  |  | Ironworker [72.22 h] | 7,944.07 | 7,700 | NOLAN | T |
| A1740 | E-201 Hydroblast Shell & Parts | 3.4d | 2011-04-07 A | 2011-04-10 A | A1730 | 100% |  | 2011-04-08 | 2011-04-11 |  |  |  |  | Hydroblaster [74.86 h]; Laborer-Construction [74.86 h] | 9,357.81 | 9,250 | NOLAN | T |
| A1080 | E-101 Inspect Bundle before Transport to Wash Rack | 11.69d | 2011-04-11 A | 2011-04-27 A | A1070 | 100% |  | 2011-04-11 | 2011-04-22 |  |  |  | 6x24 | Inspections [93.5 h]; Ironworker [93.5 h] | 18,232.5 | 20,020 | MASON | T |
| A1750 | E-201 Inspect Head & Parts | 5.29d | 2011-04-11 A | 2011-04-19 A | A1740 | 100% |  | 2011-04-11 | 2011-04-16 |  |  |  |  | Hydroblaster [116.47 h]; Inspections [116.47 h] | 20,382.54 | 23,625 | FOLEY | T |
| A1090 | E-101 Hydroblast Shell & Parts | 5.6d | 2011-04-12 A | 2011-04-19 A | A1070 | 100% |  | 2011-04-11 | 2011-04-16 |  |  | start on or after 2006-03-13 |  | Hydroblaster [123.2 h]; Laborer-Construction [123.2 h] | 15,400 | 16,750 | MASON | T |
| A1270 | E-102 Remove Channel | 9.68d | 2011-04-14 A | 2011-04-27 A | A1260 | 100% |  | 2011-04-14 | 2011-04-24 |  |  |  |  | Ironworker [77.46 h] | 8,521.06 | 9,350 | NOLAN | T |
| A1920 | E-201 Remove Channel | 8.43d | 2011-04-16 A | 2011-04-25 A | A1910 | 100% |  | 2011-04-15 | 2011-04-23 |  |  |  |  | Ironworker [67.41 h] | 3,707.64 | 4,455 | FOLEY | T |
| A1100 | E-101 Inspect Shell & Parts | 2.77d | 2011-04-16 A | 2011-04-21 A | A1090 | 100% |  | 2011-04-16 | 2011-04-19 |  |  | start on or after 2001-03-13 |  | Hydroblaster [60.83 h]; Inspections [60.83 h] | 10,645.25 | 13,475 | EVANS | T |
| A1800 | E-201 Install Channel | 4.43d | 2011-04-17 A | 2011-04-23 A | A1750 | 100% |  | 2011-04-16 | 2011-04-21 |  |  |  |  | Hydroblaster [97.48 h] | 17,546.1 | 18,810 | NOLAN | T |
| A1810 | E-201 Install Floating Head | 3.57d | 2011-04-20 A | 2011-04-25 A | A1800 | 100% |  | 2011-04-21 | 2011-04-24 |  |  |  |  | Hydroblaster [78.5 h] | 14,130.6 | 15,210 | NOLAN | T |
| A1930 | E-201 Inspect Bundle | 7.1d | 2011-04-23 A | 2011-04-29 A | A1920 | 100% |  | 2011-04-23 | 2011-04-30 |  |  |  | 6x24 | Ironworker [56.83 h]; Inspections [56.83 h] | 7,956.67 | 8,260 | FOLEY | T |
| A1110 | E-101 Set-up Bundle and Hydroblast | 6.35d | 2011-04-23 A | 2011-04-30 A | A1080 | 100% |  | 2011-04-22 | 2011-04-29 |  |  |  |  | Laborer-Construction [139.75 h]; Hydroblaster [139.75 h]; Operator [139.75 h] | 25,854.67 | 27,750 | VENDR | T |
| A1280 | E-102 Remove Floating Head | 15.25d | 2011-04-24 A | 2011-05-09 | A1270 | 35% | 8.92d |  |  | 0d |  |  |  | Ironworker [121.97 h] | 13,416.88 | 6,600 | EVANS | T |
| A1820 | E-201 Install Bowl | 4.66d | 2011-04-24 A | 2011-04-30 A | A1810 | 100% |  | 2011-04-24 | 2011-04-29 |  |  |  |  | Laborer-Construction [102.45 h]; Hydroblaster [102.45 h] | 12,805.83 | 17,500 | EVANS | T |
| A1120 | E-101 Inspection of Bundle at Wash Rack | 31.68d | 2011-04-29 A | 2011-05-30 | A1110 | 5% | 30.04d |  |  | 18.68d | 0d |  |  | Hydroblaster [0.55 h]; Inspections [158.4 h] | 13,513.5 | 1,023.78 | MILLS | T |
| A1830 | E-201 Hydro Test Shell Side | 3.58d | 2011-04-29 A | 2011-05-03 | A1820 | 27% | 2.36d |  |  | 71.11d | 0d |  |  | Hydroblaster [78.8 h] | 14,183.4 | 5,040 | EVANS | T |
| A1940 | E-201 Hydroblast Shell & Parts | 3.93d | 2011-04-30 A | 2011-05-04 | A1930 | 4% | 3.74d |  |  | 52.01d | 0d |  |  | Hydroblaster [86.61 h]; Laborer-Construction [86.61 h] | 10,825.7 | 562.5 | EVANS | T |
| A1840 | E-201 Install Front Plate | 3.32d | 2011-05-03 | 2011-05-06 | A1830 |  |  |  |  | 71.11d | 0d |  |  | Hydroblaster [73.09 h] | 13,157.1 |  | NOLAN | T |
| A1950 | E-201 Inspect Head & Parts | 13.44d | 2011-05-04 | 2011-05-17 | A1940 |  |  |  |  | 52.01d | 0d |  |  | Hydroblaster [67.19 h]; Inspections [67.19 h] | 11,758.54 |  | FOLEY | T |
| A1850 | E-201 Hydro Test Tube Side | 20.17d | 2011-05-06 | 2011-05-26 | A1840 |  |  |  |  | 71.11d | 0d |  |  | Hydroblaster [100.85 h]; Inspections [100.85 h]; Laborer-Construction [100.85 h] | 21,178.85 |  | NOLAN | T |
| A1290 | E-102 Pull Bundle | 8d | 2011-05-09 | 2011-05-17 | A1280 |  |  |  |  | 8.32d | 0d |  |  | Laborer-Construction [168.96 h] | 11,827.2 |  | NOLAN | T |
| A1470 | E-103 Remove Front Plate | 0.05d | 2011-05-09 | 2011-05-09 | A1450, A1280 |  |  |  |  | 0d |  |  |  | Ironworker [0.36 h]; Laborer-Construction [0.36 h]; Operations Test Group [0.36 h] | 61.71 |  | NOLAN | T |
| A1480 | E-103 Remove Bowl | 11.41d | 2011-05-09 | 2011-05-21 | A1470 |  |  |  |  | 0d |  |  |  | Ironworker [91.3 h] | 10,043 |  | NOLAN | T |
| A1300 | E-102 Inspect Bundle before Transport to Wash Rack | 15.99d | 2011-05-17 | 2011-06-02 | A1290 |  |  |  |  | 8.41d | 0d |  | 6x24 | Inspections [79.95 h]; Ironworker [79.95 h] | 11,193.23 |  | NOLAN | T |
| A1310 | E-102 Hydroblast Shell & Parts | 6.71d | 2011-05-17 | 2011-05-24 | A1290 |  |  |  |  | 13.79d | 0d |  |  | Hydroblaster [147.53 h]; Laborer-Construction [147.53 h] | 18,441.04 |  | NOLAN | T |
| A1960 | E-201 Install Channel | 4.18d | 2011-05-17 | 2011-05-22 | A1950 |  |  |  |  | 52.01d | 0d |  |  | Hydroblaster [92.07 h] | 16,572.6 |  | FOLEY | T |
| A1490 | E-103 Remove Channel | 4.15d | 2011-05-21 | 2011-05-25 | A1480 |  |  |  |  | 0d |  |  |  | Ironworker [91.3 h] | 10,043 |  | NOLAN | T |
| A1970 | E-201 Install Floating Head | 5.28d | 2011-05-22 | 2011-05-27 | A1960 |  |  |  |  | 52.01d | 0d |  |  | Hydroblaster [116.23 h] | 20,922 |  | FOLEY | T |
| A1320 | E-102 Inspect Shell & Parts | 30.69d | 2011-05-24 | 2011-06-24 | A1310 |  |  |  |  | 13.79d | 5.47d |  |  | Hydroblaster [153.45 h]; Inspections [153.45 h] | 26,853.75 |  | NOLAN | T |
| A1500 | E-103 Remove Floating Head | 2.25d | 2011-05-25 | 2011-05-27 | A1490 |  |  |  |  | 0d |  |  |  | Ironworker [49.59 h] | 5,455.08 |  | NOLAN | T |
| A1860 | E-201 Pull Blinds and Remove LOTO per Operatios | 3.86d | 2011-05-26 | 2011-05-30 | A1850 |  |  |  |  | 71.11d | 0d |  |  | Operator [84.85 h]; Operations Test Group [84.85 h] | 11,878.53 |  | NOLAN | T |
| A1980 | E-201 Install Bowl | 1.96d | 2011-05-27 | 2011-05-29 | A1970 |  |  |  |  | 52.01d | 0d |  |  | Hydroblaster [43.17 h]; Laborer-Construction [43.17 h] | 5,396.88 |  | FOLEY | T |
| A1510 | E-103 Pull Bundle | 2.53d | 2011-05-27 | 2011-05-30 | A1500 |  |  |  |  | 0d |  |  |  | Laborer-Construction [72.6 h] | 2,541 |  | NOLAN | T |
| A1990 | E-201 Hydro Test Shell Side | 2.27d | 2011-05-29 | 2011-05-31 | A1980 |  |  |  |  | 52.01d | 0d |  |  | Hydroblaster [50.01 h] | 9,002.4 |  | FOLEY | T |
| A1870 | E-201 Inspection by QA/QC | 18.32d | 2011-05-30 | 2011-06-17 | A1860 |  |  |  |  | 71.11d |  |  |  | Inspections [91.58 h] | 7,783.88 |  | NOLAN | T |
| A1130 | E-101 Transport Bundle to Unit and Set-Up | 3.07d | 2011-05-30 | 2011-06-02 | A1120 |  |  |  |  | 18.68d | 0d |  |  | Hydroblaster [0.55 h]; Operator [0.55 h]; Hydroblaster [67.59 h] | 6,166.05 |  | VENDR | T |
| A1520 | E-103 Inspect Bundle before Transport to Wash Rack | 15.63d | 2011-05-30 | 2011-06-17 | A1510 |  |  |  |  | 0d |  |  | 6x24 | Inspections [90.2 h]; Ironworker [90.2 h] | 12,628 |  | NOLAN | T |
| A1530 | E-103 Hydroblast Shell & Parts | 3.72d | 2011-05-30 | 2011-06-03 | A1510 |  |  |  |  | 22.31d | 0d |  |  | Hydroblaster [86.9 h]; Laborer-Construction [86.9 h] | 10,862.5 |  | NOLAN | T |
| A2000 | E-201 Install Front Plate | 2.78d | 2011-05-31 | 2011-06-03 | A1990 |  |  |  |  | 52.01d | 0d |  |  | Hydroblaster [61.23 h] | 11,022 |  | FOLEY | T |
| A1330 | E-102 Set-up Bundle and Hydroblast | 5.15d | 2011-06-02 | 2011-06-07 | A1300 |  |  |  |  | 8.32d | 0d |  |  | Laborer-Construction [1.71 h]; Hydroblaster [113.14 h]; Operator [3.42 h]; Laborer-Construction [113.14 h] | 14,407.2 |  | NOLAN | T |
| A1140 | E-101 Push Bundle | 3.07d | 2011-06-02 | 2011-06-05 | A1130, A1100 |  |  |  |  | 18.68d | 0d |  |  | Hydroblaster [67.59 h] | 12,167.1 |  | VENDR | T |
| A2010 | E-201 Hydro Test Tube Side | 10.49d | 2011-06-03 | 2011-06-13 | A2000 |  |  |  |  | 52.01d | 0d |  |  | Hydroblaster [52.43 h]; Inspections [52.43 h]; Laborer-Construction [52.43 h] | 11,011 |  | FOLEY | T |
| A1540 | E-103 Inspect Shell & Parts | 20.89d | 2011-06-03 | 2011-06-24 | A1530 |  |  |  |  | 22.31d |  |  |  | Hydroblaster [104.46 h]; Inspections [104.46 h] | 18,281.08 |  | NOLAN | T |
| A1150 | E-101 Install Channel | 7.45d | 2011-06-05 | 2011-06-13 | A1140 |  |  |  |  | 18.68d | 0d |  |  | Hydroblaster [163.88 h] | 29,498.7 |  | VENDR | T |
| A1340 | E-102 Inspection of Bundle at Wash Rack | 16.06d | 2011-06-07 | 2011-06-23 | A1330 |  |  |  |  | 8.32d | 0d |  |  | Hydroblaster [0.55 h]; Inspections [80.3 h] | 6,875 |  | NOLAN | T |
| A1160 | E-101 Install Floating Head | 4.97d | 2011-06-13 | 2011-06-18 | A1150 |  |  |  |  | 18.68d | 0d |  |  | Hydroblaster [109.39 h] | 19,691.1 |  | VENDR | T |
| A2020 | E-201 Pull Blinds and Remove LOTO per Operatios | 3.59d | 2011-06-13 | 2011-06-17 | A2010 |  |  |  |  | 52.01d | 0d |  |  | Operator [79.02 h]; Fire Suppression Subcontractor [79.02 h] | 11,457.42 |  | FOLEY | T |
| A2030 | E-201 Inspection by QA/QC | 19.38d | 2011-06-17 | 2011-07-06 | A2020 |  |  |  |  | 52.01d |  |  |  | Inspections [96.89 h] | 8,235.79 |  | FOLEY | T |

Notes:
- A1010: Expenses: Scaffolding Rental 30000
- A1240: Expenses: Scaffolding Rental 30000
- A1680: Expenses: Scaffolding Rental 15000
- A1890: Expenses: Scaffolding Rental 15000
- A1020: Steps: Intake Piping; Discharge Piping / Expenses: Blinds 0
- A1230: Steps: Intake Piping; Discharge Piping
- A1450: Steps: Intake Piping; Discharge Piping
- A1670: Steps: Intake Piping; Discharge Piping
- A1880: Steps: Intake Piping; Discharge Piping
- A1060: Expenses: Crane 0
- A1740: Steps: Hydro Shell; Clean HD/Parts
- A1090: Steps: Hydro Shell; Clean HD/Parts
- A1940: Steps: Hydro Shell; Clean HD/Parts
- A1310: Steps: Hydro Shell; Clean HD/Parts
- A1530: Steps: Hydro Shell; Clean HD/Parts

| ID | Activity | Duration | Start | Finish | Predecessors | Total float | Free float | Resources | Cost | Responsibility | Phase |
| --- | --- | --- | --- | --- | --- | --- | --- | --- | --- | --- | --- |
| A1550 | E-103 Set-up Bundle and Hydroblast | 5.2d | 2011-06-17 | 2011-06-22 | A1520 | 0d |  | Laborer-Construction [1.71 h]; Hydroblaster [114.24 h]; Operator [3.42 h]; Laborer-Construction [114.24 h] | 14,544.51 | NOLAN | T |
| A1170 | E-101 Install Bowl | 4.15d | 2011-06-18 | 2011-06-22 | A1160 | 18.68d | 0d | Hydroblaster [91.25 h]; Laborer-Construction [91.25 h] | 11,405.62 | VENDR | T |
| A1180 | E-101 Hydro Test Shell Side | 6.07d | 2011-06-22 | 2011-06-28 | A1170 | 48.71d | 0d | Hydroblaster [133.59 h] | 24,047.1 | VENDR | T |
| A1560 | E-103 Inspection of Bundle at Wash Rack | 20.89d | 2011-06-22 | 2011-07-14 | A1550 | 0d |  | Hydroblaster [0.55 h]; Inspections [109.47 h] | 9,354.31 | NOLAN | T |
| A1350 | E-102 Transport Bundle to Unit and Set-Up | 5.85d | 2011-06-23 | 2011-06-29 | A1340 | 8.32d | 0d | Hydroblaster [128.7 h]; Operator [0.44 h] | 23,192.4 | NOLAN | T |
| A1190 | E-101 Install Front Plate | 3.87d | 2011-06-28 | 2011-07-02 | A1180 | 48.71d | 0d | Hydroblaster [0.54 h]; Hydroblaster [85.19 h] | 7,716.06 | VENDR | T |
| A1360 | E-102 Push Bundle | 3.33d | 2011-06-29 | 2011-07-02 | A1350, A1320 | 8.32d | 0d | Hydroblaster [73.2 h] | 13,176.9 | NOLAN | T |
| A1200 | E-101 Hydro Test Tube Side | 3.45d | 2011-07-02 | 2011-07-05 | A1190, A1180 | 48.71d | 0d | Hydroblaster [75.84 h]; Inspections [75.84 h]; Laborer-Construction [75.84 h] | 15,927.45 | VENDR | T |
| A1370 | E-102 Install Channel | 5.79d | 2011-07-02 | 2011-07-08 | A1360, A1170 | 8.32d | 0d | Hydroblaster [127.47 h] | 22,944.9 | NOLAN | T |
| A1210 | E-101 Pull Blinds and Remove LOTO per Operatios | 3.59d | 2011-07-05 | 2011-07-09 | A1200 | 48.71d | 0d | Operations Test Group [79.09 h]; Operator [79.09 h] | 11,072.6 | VENDR | T |
| A1380 | E-102 Install Floating Head | 3.31d | 2011-07-08 | 2011-07-11 | A1370 | 8.32d | 0d | Hydroblaster [72.89 h] | 13,120.8 | NOLAN | T |
| A1220 | E-101 Inspection by QA/QC | 0.68d | 2011-07-09 | 2011-07-10 | A1210 | 48.71d |  | Inspections [14.96 h] | 1,271.6 | VENDR | T |
| A1390 | E-102 Install Bowl | 3.59d | 2011-07-11 | 2011-07-15 | A1380 | 8.32d | 0d | Hydroblaster [79.07 h]; Laborer-Construction [79.07 h] | 9,883.96 | NOLAN | T |
| A1570 | E-103 Transport Bundle to Unit and Set-Up | 2.2d | 2011-07-14 | 2011-07-16 | A1560 | 0d |  | Hydroblaster [48.4 h]; Operator [0.44 h] | 8,738.4 | NOLAN | T |
| A1400 | E-102 Hydro Test Shell Side | 3.87d | 2011-07-15 | 2011-07-19 | A1390 | 24.3d | 0d | Hydroblaster [85.12 h] | 15,321.9 | NOLAN | T |
| A1580 | E-103 Push Bundle | 6.9d | 2011-07-16 | 2011-07-23 | A1570, A1540 | 0d |  | Hydroblaster [151.73 h] | 27,310.8 | NOLAN | T |
| A1410 | E-102 Install Front Plate | 3.87d | 2011-07-19 | 2011-07-23 | A1400 | 24.3d | 0d | Hydroblaster [85.12 h] | 15,321.9 | NOLAN | T |
| A1420 | E-102 Hydro Test Tube Side | 4.34d | 2011-07-23 | 2011-07-27 | A1410 | 24.3d | 0d | Hydroblaster [95.57 h]; Inspections [95.57 h]; Laborer-Construction [95.57 h] | 20,070.05 | NOLAN | T |
| A1590 | E-103 Install Channel | 5.53d | 2011-07-23 | 2011-07-29 | A1580, A1390 | 0d |  | Hydroblaster [121.62 h] | 21,892.2 | EVANS | T |
| A1430 | E-102 Pull Blinds and Remove LOTO per Operatios | 2.19d | 2011-07-27 | 2011-07-29 | A1420 | 24.3d | 0d | Operations Test Group [48.27 h]; Operator [48.27 h] | 6,758.03 | NOLAN | T |
| A1600 | E-103 Install Floating Head | 4.45d | 2011-07-29 | 2011-08-02 | A1590 | 0d |  | Hydroblaster [97.97 h] | 17,635.2 | NOLAN | T |
| A1440 | E-102 Inspection by QA/QC | 4.74d | 2011-07-29 | 2011-08-03 | A1430 | 24.3d |  | Inspections [104.24 h] | 8,860.68 | NOLAN | T |
| A1610 | E-103 Install Bowl | 7.73d | 2011-08-02 | 2011-08-10 | A1600 | 0d |  | Hydroblaster [170.02 h]; Laborer-Construction [170.02 h] | 21,252.92 | NOLAN | T |
| A1620 | E-103 Hydro Test Shell Side | 5.24d | 2011-08-10 | 2011-08-15 | A1610 | 0d |  | Hydroblaster [115.22 h] | 20,740.5 | NOLAN | T |
| A1630 | E-103 Install Front Plate | 2.8d | 2011-08-15 | 2011-08-18 | A1620 | 0d |  | Hydroblaster [61.67 h] | 11,101.2 | NOLAN | T |
| A1640 | E-103 Hydro Test Tube Side | 3.18d | 2011-08-18 | 2011-08-21 | A1630 | 0d |  | Hydroblaster [69.92 h]; Inspections [69.92 h]; Laborer-Construction [69.92 h] | 14,683.9 | NOLAN | T |
| A1650 | E-103 Pull Blinds and Remove LOTO per Operatios | 2.75d | 2011-08-21 | 2011-08-24 | A1640 | 0d |  | Operations Test Group [60.5 h]; Operator [60.5 h] | 8,470 | NOLAN | T |
| A1660 | E-103 Inspection by QA/QC | 3.32d | 2011-08-24 | 2011-08-27 | A1650 | 0d |  | Inspections [72.98 h] | 6,203.73 | NOLAN | T |

## Activity codes

| Code | Value | Meaning |
| --- | --- | --- |
| Phase | D | Unit Decommissioning |
| Phase | P | Pre-Turnaround Work |
| Phase | T | Turnaround Work |
| Responsibility | EVANS | Tim Evans |
| Responsibility | FOLEY | Meg Foley |
| Responsibility | HARIS | Linda Haris |
| Responsibility | MASON | Andy Mason |
| Responsibility | MILLS | Tom Mills |
| Responsibility | NOLAN | Joe Nolan |
| Responsibility | VENDR | Vendor |

## Issues

| Issue | Status | Raised |
| --- | --- | --- |
| CV - Cost Variance ($) is ($11,000.00) on WBS: Ref-Exchangers | IS_Open | 2001-03-11 |
| CV - Cost Variance ($) is $79,000.00 on WBS: Ref-Exchangers | IS_Open | 2001-03-11 |
| (New Issue) | IS_Open | 2010-03-24 |
